# As issued

Schedule from MS Project XML, 2027-03-15 to 2027-05-09, 24 hours a day.

## Calendars

- Elapsed days: Mon-Sun 00:00-23:59.

## Schedule

| ID | WBS | Task | Start | Finish | Predecessors | Activity id | IfcTask type |
| --- | --- | --- | --- | --- | --- | --- | --- |
| 1 | Fitout | **Fitout** |  |  |  |  |  |
| 2 | Fitout.Logistics | **Logistics** |  |  |  |  |  |
| 3 | Fitout.Logistics.act.pod.deliver | Deliver temporary pod | 2027-03-15 | 2027-03-15 |  | act.pod.deliver | installation |
| 4 | Fitout.Logistics.act.pod.park | Pod parked awaiting relocation | 2027-03-15 | 2027-04-29 | 3SS | act.pod.park | logistic |
| 5 | Fitout.Logistics.act.pod.remove | Remove temporary pod position | 2027-04-29 | 2027-04-29 | 4FF | act.pod.remove | removal |
| 6 | Fitout.Logistics.act.pod.install | Install final bathroom pod | 2027-04-30 | 2027-04-30 | 5FS+1d | act.pod.install | installation |
| 7 | Fitout.Services | **Services** |  |  |  |  |  |
| 8 | Fitout.Services.act.first | MEP first fix in both voids | 2027-03-29 | 2027-04-18 | 3FS+14d | act.first | installation |
| 9 | Fitout.Services.act.inspect | Inspect first fix | 2027-04-19 | 2027-04-20 | 8FS+1d | act.inspect | attendance |
| 10 | Fitout.Services.act.ceiling.office | Close office ceiling | 2027-04-05 | 2027-04-11 | 3FS+21d | act.ceiling.office | construction |
| 11 | Fitout.Services.act.ceiling.corridor | Close corridor ceiling | 2027-04-05 | 2027-04-11 | 3FS+21d | act.ceiling.corridor | construction |
| 12 | Fitout.Services.act.second | Luminaires and grilles from below | 2027-04-19 | 2027-04-30 | 10FS+8d | act.second | installation |
| 13 | Fitout.Services.act.third | Drainage and sanitary third fix | 2027-05-03 | 2027-05-09 | 6FS+3d | act.third | installation |

Notes:
- 3: Scope ids: ["pod.wc.temp"]
- 4: Scope ids: ["pod.wc.temp"]
- 5: Scope ids: ["pod.wc.temp"]
- 6: Scope ids: ["pod.wc"]
- 8: Scope ids: ["tray.void.ocorr.1","pipe.chw.void.f","pipe.chw.void.r","fcu.office.1","cnd.void.office.1","cnd.void.office.2"]
- 9: Scope ids: ["sp.void.office","sp.void.ocorr.1"]
- 10: Scope ids: ["clg.office"]
- 11: Scope ids: ["clg.ocorr.1"]
- 12: Scope ids: ["lum.office.1","lum.office.2","lum.office.3","lum.office.4","lum.office.5","lum.office.6","grl.office.1","grl.office.2","grl.office.3","grl.office.4"]
- 13: Scope ids: ["pipe.drain.pod","san.pod.1","san.pod.2"]
